# Project Management for Longhorn Web Consolidation

Schedule from MS Project, 2017-01-03 to 2017-07-26, A marks actual dates.
ASG Software Solutions
The Project Management template plan provides a work breakdown structure that can be used to plan and schedule the effort of the Project Management activities. / The template was built using all the stages, activities and tasks from the Project Management methodology.

## Calendars

- Standard: Mon-Fri 08:00-12:00, 13:00-17:00; Sat-Sun off.

## Resources

| Resource | Notes |
| --- | --- |
| Project Director | Responsible for management of the project at a strategic level. |
| Project Manager | Responsible for the delivery of a quality project on-schedule, within budget, with a satisfied Acceptor and a motivated project team. |
| Acceptor | Key individual within the business organization who is the principal interface with the project team and who has the authority to accept all deliverables and resolve all project issues (sometimes referred to as the Project Sponsor). |
| Application Architect | Defines the major application systems needed to support the enterprise. During systems development, the Application Architect defines the application solution. |
| Technical Architect | Defines the technologies and standards required to support the application and information architectures. During systems development, the Technical Architect defines the technical solution. |
| Quality Assurance Manager | Responsible for providing confidence to management that the Quality System is being applied. |
| Contracts Manager | Responsible for managing the contractual interfaces with the customer and with subcontractors. |

## Schedule

| ID | WBS | Task | Type | Duration | Start | Finish | Predecessors | Complete | Actual finish | Constraint |
| --- | --- | --- | --- | --- | --- | --- | --- | --- | --- | --- |
| 1 | 1 | **Initiation** |  | 9d | 2017-01-03 A | 2017-01-13 |  | 100% | 2017-01-12 |  |
| 2 | 1.1 | **Project Kickoff Meeting** |  | 1d | 2017-01-03 A | 2017-01-03 A |  | 100% |  |  |
| 3 | 1.1.1 | Discuss Project Ground Rules |  | 1d | 2017-01-03 A | 2017-01-03 A |  | 100% |  |  |
| 4 | 1.1.2 | Develop Project Team Agreement |  | 1d | 2017-01-03 A | 2017-01-03 A | 3FF | 100% |  |  |
| 5 | 1.2 | **Prepare Project Charter** |  | 4d | 2017-01-03 A | 2017-01-06 A |  | 100% |  |  |
| 6 | 1.2.1 | Identify Business Need and Objectives |  | 2d | 2017-01-03 A | 2017-01-04 A |  | 100% |  |  |
| 7 | 1.2.2 | Outline Project Requirements and Deliverables |  | 1d? | 2017-01-05 A | 2017-01-05 A | 6 | 100% |  |  |
| 8 | 1.2.3 | Develop Project Charter |  | 1d | 2017-01-06 A | 2017-01-06 A | 7 | 100% |  |  |
| 9 | 1.3 | **Project Charter Review and Approval** |  | 4d | 2017-01-09 A | 2017-01-12 A | 5 | 100% |  |  |
| 10 | 1.3.1 | Submit Project Charter |  | 1d | 2017-01-09 A | 2017-01-09 A | 8 | 100% |  |  |
| 11 | 1.3.2 | Project Charter Review |  | 2d | 2017-01-10 A | 2017-01-11 A | 10 | 100% |  |  |
| 12 | 1.3.3 | Project Charter Approval |  | 1d | 2017-01-12 A | 2017-01-12 A | 11 | 100% |  |  |
| 13 | 1.4 | Create Preliminary Project Scope | manual | 1d | 2017-01-03 A | 2017-01-03 A |  | 100% |  | start no earlier than 2017-01-03 |
| 14 | 2 | **Planning** |  | 19d | 2017-01-16 A | 2017-02-09 A | 1 | 100% |  |  |
| 15 | 2.1 | Create Preliminary Project Scope Statement |  | 3d | 2017-01-16 A | 2017-01-18 A |  | 100% |  |  |
| 16 | 2.2 | **Stakeholder Analysis** |  | 5d | 2017-01-19 A | 2017-01-25 A | 15 | 100% |  |  |
| 17 | 2.2.1 | Identify Stakeholders |  | 2d | 2017-01-19 A | 2017-01-20 A |  | 100% |  |  |
| 18 | 2.2.2 | Create Stakeholder Matrix |  | 1d | 2017-01-23 A | 2017-01-23 A | 17 | 100% |  |  |
| 19 | 2.2.3 | Establish Communication Channels |  | 2d | 2017-01-24 A | 2017-01-25 A | 18 | 100% |  |  |
| 20 | 2.3 | **Determine Project Team** |  | 3d | 2017-01-26 A | 2017-01-30 A | 16 | 100% |  |  |
| 21 | 2.3.1 | Develop Team Hierarchy |  | 1d | 2017-01-26 A | 2017-01-26 A |  | 100% |  |  |
| 22 | 2.3.2 | Identity Team's Skillset and Determine Size |  | 2d | 2017-01-27 A | 2017-01-30 A | 21 | 100% |  |  |
| 23 | 2.4 | **Develop Project Plan** |  | 4d | 2017-01-31 A | 2017-02-03 A | 20 | 100% |  |  |
| 24 | 2.4.1 | Estimate Project Budget |  | 4d | 2017-01-31 A | 2017-02-03 A |  | 100% |  |  |
| 25 | 2.4.2 | Estimate Project Time |  | 4d | 2017-01-31 A | 2017-02-03 A | 24SS | 100% |  |  |
| 26 | 2.4.3 | Identify Initial Risks |  | 4d | 2017-01-31 A | 2017-02-03 A | 25SS | 100% |  |  |

Notes:
- 1: The Initiation Stage does the preliminary analysis to define the project objectives and ensures that further project work is authorized. / Text1: VPEND<VP ID="0_134424" TYP="0" />
- 5: The Project Charter is developed to formally authorize a project. The Project Charter contrains the high level definition of the project and the business justification for the project. / Text1: VPEND<VP ID="0_168547" TYP="0" />
- 6: Define the primary goals and objectives for the project. / Text1: VPDATA:<VP ID="0_80816" TYP="0"><VP ID="0_97923" TYP="3" /><VP ID="0_80996" TYP="2"><VP ID="0_141944" TYP="3" /><VP ID="0_92093" TYP="3" /><VP ID="0_81772" TYP="3" /></VP><VP ID="0_113117" TYP="2"><VP ID="0_141946" TYP="3" /></VP><VP ID="0_17301" TYP="1" / Text2: VPEND/></VP> / Text7: Goals and Objectives, List of Constraints
- 7: Understand the business organization and its personnel and formulate high level strategies and plans to ensure achievement of objectives. / Text1: VPDATA:<VP ID="0_17185" TYP="0"><VP ID="0_108287" TYP="3" /><VP ID="0_17253" TYP="2" /><VP ID="0_20340" TYP="2"><VP ID="0_79735" TYP="3" /><VP ID="0_79733" TYP="3" /><VP ID="0_79736" TYP="3" /><VP ID="0_79731" TYP="3" /><VP ID="0_22284" TYP="3" /></VP><VP / Text2: VPEND ID="0_13058" TYP="2"><VP ID="0_87966" TYP="3" /></VP><VP ID="0_17301" TYP="1" /></VP> / Text7: Strategies and Plans
- 8: Develop the Project Charter and present it for approval to proceed with the project. / Text1: VPEND<VP ID="0_134438" TYP="0"><VP ID="0_134441" TYP="2"><VP ID="0_134448" TYP="3" /></VP><VP ID="0_17303" TYP="1" /><VP ID="0_20510" TYP="1" /></VP> / Text7: Project Charter
- 14: The Planning Stage defines the necessary steps to ensure that proper planning is done, during project start-up, before each new phase starts and as part of the change management process / Text1: VPEND<VP ID="0_134450" TYP="0" />
- 16: Ensure that the fundamental project delivery infrastructure is in place (e.g., work space, standards and procedures, project tools). / Text1: VPEND<VP ID="0_80808" TYP="0" />
- 17: Obtain and furnish work space with the appropriate facilities. / Text1: VPEND<VP ID="0_17214" TYP="0"><VP ID="0_134620" TYP="2" /><VP ID="0_17303" TYP="1" /></VP> / Text7: Physical Project Environment
- 18: Define and document the specific standards and procedures to be applied on the project to ensure consistent delivery in accordance with the quality requirements. / Text1: VPDATA:<VP ID="0_17215" TYP="0"><VP ID="0_17276" TYP="2"><VP ID="0_162156" TYP="3" /><VP ID="0_78321" TYP="3" /><VP ID="0_26215" TYP="2"><VP ID="0_162159" TYP="3" /><VP ID="0_78320" TYP="3" /><VP ID="0_77357" TYP="2"><VP ID="0_162162" TYP="3" /><VP ID="0_ / Text2: VPDATA:77827" TYP="3" /></VP><VP ID="0_77358" TYP="2"><VP ID="0_162165" TYP="3" /><VP ID="0_77829" TYP="3" /></VP></VP><VP ID="0_77354" TYP="2"><VP ID="0_162168" TYP="3" /><VP ID="0_78322" TYP="3" /><VP ID="0_77361" TYP="2"><VP ID="0_162171" TYP="3" /><VP / Text3: VPDATA: ID="0_77836" TYP="3" /></VP><VP ID="0_77362" TYP="2"><VP ID="0_162174" TYP="3" /><VP ID="0_77838" TYP="3" /></VP><VP ID="0_77363" TYP="2"><VP ID="0_162177" TYP="3" /><VP ID="0_77840" TYP="3" /></VP><VP ID="0_78274" TYP="2"><VP ID="0_162180" TYP="3 / Text4: VPDATA:" /><VP ID="0_78278" TYP="3" /></VP></VP><VP ID="0_26216" TYP="2"><VP ID="0_162183" TYP="3" /><VP ID="0_78323" TYP="3" /><VP ID="0_77374" TYP="2"><VP ID="0_162186" TYP="3" /><VP ID="0_77842" TYP="3" /></VP><VP ID="0_77375" TYP="2"><VP ID="0_162188" / Text5: VPDATA: TYP="3" /><VP ID="0_77844" TYP="3" /></VP><VP ID="0_77376" TYP="2"><VP ID="0_162191" TYP="3" /><VP ID="0_77846" TYP="3" /></VP><VP ID="0_77377" TYP="2"><VP ID="0_162194" TYP="3" /><VP ID="0_77848" TYP="3" /></VP></VP><VP ID="0_26217" TYP="2"><VP I / Text6: VPDATA:D="0_141964" TYP="3" /></VP><VP ID="0_77356" TYP="2"><VP ID="0_162197" TYP="3" /><VP ID="0_78326" TYP="3" /><VP ID="0_78336" TYP="2"><VP ID="0_162200" TYP="3" /><VP ID="0_78350" TYP="3" /></VP><VP ID="0_78337" TYP="2"><VP ID="0_162203" TYP="3" /><V / Text7: Project Standards and Procedures, Standards and Procedures for Team Performance, Standards and Procedures for General Practices, Standards and Procedures for Meetings, Standards and Procedures for Cost/Schedule Management, Standards and Procedures for Org / Text8: VPDATA:P ID="0_78351" TYP="3" /></VP><VP ID="0_78338" TYP="2"><VP ID="0_162206" TYP="3" /><VP ID="0_78352" TYP="3" /></VP><VP ID="0_78340" TYP="2"><VP ID="0_162209" TYP="3" /><VP ID="0_78353" TYP="3" /></VP><VP ID="0_78341" TYP="2"><VP ID="0_162212" TYP=" / Text9: VPDATA:3" /><VP ID="0_104426" TYP="3" /><VP ID="0_78354" TYP="3" /></VP><VP ID="0_78342" TYP="2"><VP ID="0_162215" TYP="3" /><VP ID="0_104427" TYP="3" /><VP ID="0_78355" TYP="3" /></VP><VP ID="0_78343" TYP="2"><VP ID="0_162218" TYP="3" /><VP ID="0_78356" / Text10: VPENDTYP="3" /></VP></VP><VP ID="0_77360" TYP="2"><VP ID="0_141960" TYP="3" /></VP><VP ID="0_77359" TYP="2"><VP ID="0_162221" TYP="3" /><VP ID="0_77831" TYP="3" /></VP></VP><VP ID="0_17307" TYP="1" /></VP>
- 19: Implement the project management tools to be used by the project team to manage performance. / Text1: VPEND<VP ID="0_17216" TYP="0"><VP ID="0_18348" TYP="2" /><VP ID="0_17303" TYP="1" /></VP> / Text7: Project Management Tools

| ID | WBS | Task | Duration | Start | Finish | Predecessors | Complete | Remaining | Total slack | Free slack |
| --- | --- | --- | --- | --- | --- | --- | --- | --- | --- | --- |
| 27 | 2.5 | **Project Plan Review and Approval** | 4d | 2017-02-06 A | 2017-02-09 A | 23 | 100% |  |  |  |
| 28 | 2.5.1 | Submit Project Plan | 1d | 2017-02-06 A | 2017-02-06 A |  | 100% |  |  |  |
| 29 | 2.5.2 | Project Plan Review | 2d | 2017-02-07 A | 2017-02-08 A | 28 | 100% |  |  |  |
| 30 | 2.5.3 | Project Plan Approval | 1d | 2017-02-09 A | 2017-02-09 A | 29 | 100% |  |  |  |
| 31 | 3 | **Execution** | 88d | 2017-02-10 A | 2017-06-13 | 14 | 19% | 71.36d | 0d |  |
| 32 | 3.1 | **Review Requirements** | 3d | 2017-02-10 A | 2017-02-14 A |  | 100% |  |  |  |
| 33 | 3.1.1 | Analyze Feasibility | 3d | 2017-02-10 A | 2017-02-14 A |  | 100% |  |  |  |
| 34 | 3.2 | **Develop Single-Sign-On** | 15d | 2017-02-15 A | 2017-03-07 | 32 | 78% | 3.3d | 0d |  |
| 35 | 3.2.1 | Develop sign-on webservice | 10d | 2017-02-15 A | 2017-02-28 A |  | 100% |  |  |  |
| 36 | 3.2.2 | Backend Development | 10d | 2017-02-15 A | 2017-02-28 |  | 80% | 2d | 1.5d | 0d |
| 37 | 3.2.3 | Webservice and Application Integration | 5d | 2017-03-01 A | 2017-03-07 | 36 | 30% | 3.5d | 0d |  |
| 38 | 3.3 | **Redesign UI** | 10d | 2017-03-08 | 2017-03-21 | 34 |  |  | 0d |  |
| 39 | 3.3.1 | Front-End Coding | 10d | 2017-03-08 | 2017-03-21 |  |  |  | 0d |  |
| 40 | 3.4 | **Develop Mobile Solution** | 12d | 2017-03-22 | 2017-04-06 | 38 |  |  | 0d |  |
| 41 | 3.4.1 | Mobile Front-End Coding | 12d | 2017-03-22 | 2017-04-06 |  |  |  | 0d |  |
| 42 | 3.4.2 | Mobile Back-End Coding | 12d | 2017-03-22 | 2017-04-06 | 41SS |  |  | 0d |  |
| 43 | 3.5 | **Create Dashboard Application** | 19d | 2017-04-07 | 2017-05-03 | 40 |  |  | 0d |  |
| 44 | 3.5.1 | Dashboard Front-End Coding | 9d | 2017-04-07 | 2017-04-19 |  |  |  | 0d |  |
| 45 | 3.5.2 | Dashboard Back-End Coding | 9d | 2017-04-07 | 2017-04-19 |  |  |  | 10d |  |
| 46 | 3.5.3 | Application and Dashboard Integration | 10d | 2017-04-20 | 2017-05-03 | 44 |  |  | 0d |  |
| 47 | 3.6 | **Testing** | 15d | 2017-05-04 | 2017-05-24 | 43 |  |  | 0d |  |
| 48 | 3.6.1 | Create Test Plans | 4d | 2017-05-04 | 2017-05-09 |  |  |  | 0d |  |
| 49 | 3.6.2 | System Integration Testing | 7d | 2017-05-10 | 2017-05-18 | 48 |  |  | 0d |  |
| 50 | 3.6.3 | Acceptance Testing | 4d | 2017-05-19 | 2017-05-24 | 49 |  |  | 0d |  |

| ID | WBS | Task | Duration | Start | Finish | Predecessors | Total slack |
| --- | --- | --- | --- | --- | --- | --- | --- |
| 51 | 3.7 | **Production Deployment** | 14d | 2017-05-25 | 2017-06-13 | 47 | 0d |
| 52 | 3.7.1 | Prepare Deployment Plan | 1d | 2017-05-25 | 2017-05-25 |  | 0d |
| 53 | 3.7.2 | Install Prerequisites | 6d | 2017-05-26 | 2017-06-02 | 52 | 0d |
| 54 | 3.7.3 | Deploy Code | 7d | 2017-06-05 | 2017-06-13 | 53 | 0d |
| 55 | 4 | **Controlling** | 17d | 2017-06-14 | 2017-07-06 | 51 | 0d |
| 56 | 4.1 | **Create Change Control Plan** | 3d | 2017-06-14 | 2017-06-16 |  | 0d |
| 57 | 4.1.1 | Change Impact Analysis | 2d | 2017-06-14 | 2017-06-15 |  | 0d |
| 58 | 4.1.2 | Change Request Approval | 1d | 2017-06-16 | 2017-06-16 | 57 | 0d |
| 59 | 4.2 | Conduct Product Status Meeting | 1d | 2017-06-19 | 2017-06-19 | 56 | 13d |
| 60 | 4.3 | **Develop Approved Change Requests** | 8d | 2017-06-19 | 2017-06-28 | 56 | 0d |
| 61 | 4.3.1 | Front-End and Back-End Coding | 5d | 2017-06-19 | 2017-06-23 |  | 0d |
| 62 | 4.3.2 | Testing Developed Change Requests | 3d | 2017-06-26 | 2017-06-28 | 61 | 0d |
| 63 | 4.4 | **Perform Risk Management** | 4d | 2017-06-29 | 2017-07-04 | 60 | 0d |
| 64 | 4.4.1 | Risk Analysis | 2d | 2017-06-29 | 2017-06-30 |  | 0d |
| 65 | 4.4.2 | Risk Mitigation | 2d | 2017-07-03 | 2017-07-04 | 64 | 0d |
| 66 | 4.5 | Update Project Plan | 2d | 2017-07-05 | 2017-07-06 | 63 | 0d |
| 67 | 5 | **Sign-Off** | 14d | 2017-07-07 | 2017-07-26 | 55 | 0d |
| 68 | 5.1 | Audit Developed Project | 5d | 2017-07-07 | 2017-07-13 |  | 0d |
| 69 | 5.2 | Document Report for Client | 2d | 2017-07-14 | 2017-07-17 | 68 | 0d |
| 70 | 5.3 | Stakeholder Formal Approval | 2d | 2017-07-18 | 2017-07-19 | 69 | 0d |
| 71 | 5.4 | Create Backup of Files and Documents | 5d | 2017-07-20 | 2017-07-26 | 70 | 0d |
